# ManagedAtoms

Schedule from MS Project, 2009-09-28 to 2009-10-12, A marks actual dates.

## Calendars

- Standard: Mon-Fri 08:00-12:00, 13:00-17:00; Sat-Sun off.

## Schedule

| ID | WBS | Task | Duration | Start | Finish | Predecessors | Complete | Remaining | Total slack | Free slack |
| --- | --- | --- | --- | --- | --- | --- | --- | --- | --- | --- |
| 1 | 1 | **UIAtoms** | 10.75d | 2009-09-28 08:00 A | 2009-10-12 15:00 |  | 28% | 7.78d | 0d |  |
| 2 | 1.1 | **WpfAtoms** | 3.62d | 2009-09-28 08:00 A | 2009-10-01 14:00 |  | 41% | 2.15d | 1.5d | 0d |
| 3 | 1.1.1 | NSDateEditControl | 1h | 2009-09-28 08:00 A | 2009-09-28 09:00 A |  | 100% |  |  |  |
| 4 | 1.1.2 | NSMultiDateEditControl | 2h | 2009-09-28 09:00 A | 2009-09-28 11:00 A | 3 | 100% |  |  |  |
| 5 | 1.1.3 | NSMaskedEditControl | 8h | 2009-09-28 11:00 | 2009-09-29 11:00 | 4 |  |  | 1.6d | 0d |
| 6 | 1.1.4 | NSVirtualKeyboard | 4h | 2009-09-29 11:00 A | 2009-09-29 16:00 | 5 | 20% | 3.2h | 1.5d | 0d |
| 7 | 1.1.5 | NSVirtualKeyboardHelper | 2h | 2009-09-29 16:00 | 2009-09-30 09:00 | 6 |  |  | 1.5d |  |
| 8 | 1.1.6 | NSForm | 1h | 2009-09-30 09:00 A | 2009-09-30 10:00 A | 7 | 100% |  |  |  |
| 9 | 1.1.7 | NSFormControls | 1h | 2009-09-30 10:00 A | 2009-09-30 11:00 A | 8 | 100% |  |  |  |
| 10 | 1.1.8 | NSCheckBoxList | 2h | 2009-09-30 11:00 A | 2009-09-30 14:00 A | 9 | 100% |  |  |  |
| 11 | 1.1.9 | NSRadioButtonList | 2h | 2009-09-30 14:00 A | 2009-09-30 16:00 A | 10 | 100% |  |  |  |
| 12 | 1.1.10 | NSToggleButtonBar | 2h | 2009-09-30 16:00 A | 2009-10-01 09:00 A | 11 | 100% |  |  |  |
| 13 | 1.1.11 | NSAccordian | 4h | 2009-10-01 09:00 | 2009-10-01 14:00 | 12 |  |  | 0.56d |  |
| 14 | 1.2 | **SlAtoms** | 3.62d | 2009-10-01 14:00 A | 2009-10-07 10:00 | 2 | 41% | 2.12d | 0d |  |
| 15 | 1.2.1 | NSDateEditControl | 1h | 2009-10-01 14:00 A | 2009-10-01 15:00 A |  | 100% |  |  |  |
| 16 | 1.2.2 | NSMultiDateEditControl | 2h | 2009-10-01 15:00 A | 2009-10-01 17:00 A | 15 | 100% |  |  |  |
| 17 | 1.2.3 | NSMaskedEditControl | 8h | 2009-10-02 08:00 | 2009-10-02 17:00 | 16 |  |  | 1.5d | 0d |
| 18 | 1.2.4 | NSVirtualKeyboard | 4h | 2009-10-05 08:00 A | 2009-10-05 12:00 | 17 | 50% | 2h | 1.62d | 0d |
| 19 | 1.2.5 | NSVirtualKeyboardHelper | 2h | 2009-10-05 13:00 A | 2009-10-05 15:00 | 18 | 50% | 1h | 1.5d |  |
| 20 | 1.2.6 | NSForm | 1h | 2009-10-05 15:00 A | 2009-10-05 16:00 A | 19 | 100% |  |  |  |
| 21 | 1.2.7 | NSFormControls | 1h | 2009-10-05 16:00 A | 2009-10-05 17:00 A | 20 | 100% |  |  |  |
| 22 | 1.2.8 | NSCheckBoxList | 2h | 2009-10-06 08:00 A | 2009-10-06 10:00 A | 21 | 100% |  |  |  |
| 23 | 1.2.9 | NSRadioButtonList | 2h | 2009-10-06 10:00 A | 2009-10-06 12:00 A | 22 | 100% |  |  |  |
| 24 | 1.2.10 | NSToggleButtonBar | 2h | 2009-10-06 13:00 | 2009-10-06 15:00 | 23 |  |  | 0d |  |
| 25 | 1.2.11 | NSAccordian | 4h | 2009-10-06 15:00 | 2009-10-07 10:00 | 24 |  |  | 0d |  |

| ID | WBS | Task | Duration | Start | Finish | Predecessors | Total slack |
| --- | --- | --- | --- | --- | --- | --- | --- |
| 26 | 1.3 | **Packaging** | 2.25d | 2009-10-07 10:00 | 2009-10-09 12:00 | 14 | 0d |
| 27 | 1.3.1 | NS Dev Website | 8h | 2009-10-07 10:00 | 2009-10-08 10:00 |  | 0d |
| 28 | 1.3.2 | Help Files | 8h | 2009-10-08 10:00 | 2009-10-09 10:00 | 27 | 0d |
| 29 | 1.3.3 | Samples | 2h | 2009-10-09 10:00 | 2009-10-09 12:00 | 28 | 0d |
| 30 | 1.4 | **Marketing** | 1.25d | 2009-10-09 13:00 | 2009-10-12 15:00 | 26 | 0d |
| 31 | 1.4.1 | Adwords | 1h | 2009-10-09 13:00 | 2009-10-09 14:00 |  | 0d |
| 32 | 1.4.2 | Code Project Articles | 4h | 2009-10-09 14:00 | 2009-10-12 09:00 | 31 | 0d |
| 33 | 1.4.3 | Stack Overflow Ads | 1h | 2009-10-12 09:00 | 2009-10-12 10:00 | 32 | 0d |
| 34 | 1.4.4 | .NET Community Websites | 4h | 2009-10-12 10:00 | 2009-10-12 15:00 | 33 | 0d |
